# Sistema de Gestión del Asilo «Cabeza de Algodón» · Plan v3

Schedule from MS Project XML, 2026-08-24 to 2026-11-20, status date 2026-10-30, A marks actual dates.
UMG · Centro Regional de Mazatenango

## Calendars

- Estándar: Mon-Fri 08:00-12:00, 13:00-17:00; Sat-Sun off.

## Resources

| Resource | Group |
| --- | --- |
| Unassigned |  |
| Gilmer Iván Ortiz Samayoa | Analista-desarrollador |

## Schedule

| ID | WBS | Task | Duration | Start | Finish | Predecessors | Complete | Constraint | Resources | Work |
| --- | --- | --- | --- | --- | --- | --- | --- | --- | --- | --- |
| 1 | 1 | **Iteración I1 · Análisis y línea base** | 10d | 2026-08-24 A | 2026-09-04 A |  | 100% | must start on 2026-08-24 |  | 35h |
| 2 | 1.1 | [Requerimiento] Levantar necesidades del asilo y definir alcance v1 / fase 2 | 10d | 2026-08-24 A | 2026-09-04 A |  | 100% | must start on 2026-08-24 | Gilmer Iván Ortiz Samayoa [10%] | 8h |
| 3 | 1.2 | [Requerimiento] Redactar ERS (RF y RNF medibles) y casos de uso | 10d | 2026-08-24 A | 2026-09-04 A |  | 100% | must start on 2026-08-24 | Gilmer Iván Ortiz Samayoa [17.5%] | 14h |
| 4 | 1.3 | [Documentación] Declarar metodología incremental y plan de iteraciones | 10d | 2026-08-24 A | 2026-09-04 A |  | 100% | must start on 2026-08-24 | Gilmer Iván Ortiz Samayoa [6.2%] | 5h |
| 5 | 1.4 | [Prueba] Revisión cruzada de requerimientos (claros, únicos y verificables) | 10d | 2026-08-24 A | 2026-09-04 A |  | 100% | must start on 2026-08-24 | Gilmer Iván Ortiz Samayoa [6.2%] | 5h |
| 6 | 1.5 | [Revisión SQA] Hito SQA 1: revisión de alcance y ERS | 10d | 2026-08-24 A | 2026-09-04 A |  | 100% | must start on 2026-08-24 | Gilmer Iván Ortiz Samayoa [3.7%] | 3h |
| 7 | 2 | **Iteración I2 · Diseño de datos y experiencia de usuario** | 10d | 2026-09-07 A | 2026-09-18 A | 1 | 100% | must start on 2026-09-07 |  | 35h |
| 8 | 2.1 | [Requerimiento] Modelo entidad-relación y diccionario de datos | 10d | 2026-09-07 A | 2026-09-18 A |  | 100% | must start on 2026-09-07 | Gilmer Iván Ortiz Samayoa [10%] | 8h |
| 9 | 2.2 | [Desarrollo] Script SQL versionado (esquema, datos de prueba, vistas) | 10d | 2026-09-07 A | 2026-09-18 A |  | 100% | must start on 2026-09-07 | Gilmer Iván Ortiz Samayoa [12.5%] | 10h |
| 10 | 2.3 | [Desarrollo] Prototipo de pantallas y navegación por rol | 10d | 2026-09-07 A | 2026-09-18 A |  | 100% | must start on 2026-09-07 | Gilmer Iván Ortiz Samayoa [11.3%] | 9h |
| 11 | 2.4 | [Prueba] Validar el script contra el diccionario y probar con datos ficticios | 10d | 2026-09-07 A | 2026-09-18 A |  | 100% | must start on 2026-09-07 | Gilmer Iván Ortiz Samayoa [6.2%] | 5h |
| 12 | 2.5 | [Revisión SQA] Hito SQA 2: revisión del modelo de datos | 10d | 2026-09-07 A | 2026-09-18 A |  | 100% | must start on 2026-09-07 | Gilmer Iván Ortiz Samayoa [3.7%] | 3h |
| 13 | 3 | **Iteración I3 · Núcleo: seguridad, usuarios y residentes** | 10d | 2026-09-21 A | 2026-10-02 A | 7 | 100% | must start on 2026-09-21 |  | 35h |
| 14 | 3.1 | [Desarrollo] Inicio de sesión, PBKDF2, bloqueo y cambio obligatorio de contraseña | 10d | 2026-09-21 A | 2026-10-02 A |  | 100% | must start on 2026-09-21 | Gilmer Iván Ortiz Samayoa [12.5%] | 10h |
| 15 | 3.2 | [Desarrollo] Registro, consulta, búsqueda, edición y egreso de residentes; habitaciones | 10d | 2026-09-21 A | 2026-10-02 A |  | 100% | must start on 2026-09-21 | Gilmer Iván Ortiz Samayoa [15%] | 12h |
| 16 | 3.3 | [Prueba] Pruebas funcionales y de seguridad del núcleo | 10d | 2026-09-21 A | 2026-10-02 A |  | 100% | must start on 2026-09-21 | Gilmer Iván Ortiz Samayoa [11.3%] | 9h |
| 17 | 3.4 | [Revisión SQA] Hito SQA 3: revisión del núcleo | 10d | 2026-09-21 A | 2026-10-02 A |  | 100% | must start on 2026-09-21 | Gilmer Iván Ortiz Samayoa [5%] | 4h |
| 18 | 4 | **Iteración I4 · Atención médica** | 10d | 2026-10-05 A | 2026-10-16 A | 13 | 100% | must start on 2026-10-05 |  | 35h |
| 19 | 4.1 | [Desarrollo] Ficha médica, notas, signos vitales y medicación del día | 10d | 2026-10-05 A | 2026-10-16 A |  | 100% | must start on 2026-10-05 | Gilmer Iván Ortiz Samayoa [12.5%] | 10h |
| 20 | 4.2 | [Desarrollo] Citas, personal médico, laboratorio e inventario de medicamentos | 10d | 2026-10-05 A | 2026-10-16 A |  | 100% | must start on 2026-10-05 | Gilmer Iván Ortiz Samayoa [15%] | 12h |
| 21 | 4.3 | [Prueba] Pruebas funcionales de atención médica | 10d | 2026-10-05 A | 2026-10-16 A |  | 100% | must start on 2026-10-05 | Gilmer Iván Ortiz Samayoa [11.3%] | 9h |
| 22 | 4.4 | [Revisión SQA] Hito SQA 4: revisión de módulos de atención | 10d | 2026-10-05 A | 2026-10-16 A |  | 100% | must start on 2026-10-05 | Gilmer Iván Ortiz Samayoa [5%] | 4h |
| 23 | 5 | **Iteración I5 · Administración y persistencia MySQL** | 10d | 2026-10-19 A | 2026-10-30 A | 18 | 100% | must start on 2026-10-19 |  | 35h |
| 24 | 5.1 | [Desarrollo] Farmacia (rol Paciente), facturación, donaciones y mi expediente | 10d | 2026-10-19 A | 2026-10-30 A |  | 100% | must start on 2026-10-19 | Gilmer Iván Ortiz Samayoa [11.3%] | 9h |
| 25 | 5.2 | [Desarrollo] Reportes PDF/CSV, panel principal, bitácora y respaldo | 10d | 2026-10-19 A | 2026-10-30 A |  | 100% | must start on 2026-10-19 | Gilmer Iván Ortiz Samayoa [10%] | 8h |
| 26 | 5.3 | [Desarrollo] API PHP + MySQL con permisos por rol en el servidor | 10d | 2026-10-19 A | 2026-10-30 A |  | 100% | must start on 2026-10-19 | Gilmer Iván Ortiz Samayoa [7.5%] | 6h |
| 27 | 5.4 | [Prueba] Pruebas funcionales, de permisos y de rendimiento (RNF-05) | 10d | 2026-10-19 A | 2026-10-30 A |  | 100% | must start on 2026-10-19 | Gilmer Iván Ortiz Samayoa [10%] | 8h |
| 28 | 5.5 | [Revisión SQA] Hito SQA 5: atención de hallazgos H-01 a H-10 | 10d | 2026-10-19 A | 2026-10-30 A |  | 100% | must start on 2026-10-19 | Gilmer Iván Ortiz Samayoa [5%] | 4h |

Notes:
- 2: Entregable / evidencia: Alcance aprobado
- 3: Entregable / evidencia: ERS v1.0
- 4: Entregable / evidencia: Plan del proyecto
- 5: Entregable / evidencia: Lista de verificación ISO 29148
- 6: Entregable / evidencia: Acta de revisión
- 8: Entregable / evidencia: Modelo ER + diccionario
- 9: Entregable / evidencia: 01/02/03 .sql
- 10: Entregable / evidencia: Prototipo navegable
- 11: Entregable / evidencia: Evidencia de importación
- 12: Entregable / evidencia: Acta de revisión
- 14: Entregable / evidencia: RF-01, RF-02, RF-21, RF-22
- 15: Entregable / evidencia: RF-03 a RF-07, RF-20
- 16: Entregable / evidencia: CP-01 a CP-07, PV-01 a PV-18
- 17: Entregable / evidencia: Acta de revisión
- 19: Entregable / evidencia: RF-15, RF-16, RF-17
- 20: Entregable / evidencia: RF-08, RF-09, RF-10, RF-18
- 21: Entregable / evidencia: CP-08 a CP-10, CP-15 a CP-18
- 22: Entregable / evidencia: Acta de revisión
- 24: Entregable / evidencia: RF-11, RF-19, RF-25
- 25: Entregable / evidencia: RF-12, RF-13, RF-23, RF-24
- 26: Entregable / evidencia: api.php, config.php
- 27: Entregable / evidencia: CP-11 a CP-14, CP-19 a CP-27 · Repetida con 200 residentes el 30/10/2026 (PR-01 a PR-06).
- 28: Entregable / evidencia: Respuesta al informe SQA

| ID | WBS | Task | Duration | Start | Finish | Predecessors | Constraint | Resources | Work |
| --- | --- | --- | --- | --- | --- | --- | --- | --- | --- |
| 29 | 6 | **Iteración I6 · Integración, despliegue y aceptación** | 10d | 2026-11-02 | 2026-11-13 | 23 | must start on 2026-11-02 |  | 35h |
| 30 | 6.1 | [Desarrollo] Despliegue en XAMPP y en hosting con HTTPS; ajustes de configuración | 10d | 2026-11-02 | 2026-11-13 |  | must start on 2026-11-02 | Gilmer Iván Ortiz Samayoa [11.3%] | 9h |
| 31 | 6.2 | [Prueba] Pruebas de aceptación con usuarios del asilo (meta RNF-02) | 10d | 2026-11-02 | 2026-11-13 |  | must start on 2026-11-02 | Gilmer Iván Ortiz Samayoa [12.5%] | 10h |
| 32 | 6.3 | [Prueba] Regresión completa y verificación de cierre de hallazgos | 10d | 2026-11-02 | 2026-11-13 |  | must start on 2026-11-02 | Gilmer Iván Ortiz Samayoa [10%] | 8h |
| 33 | 6.4 | [Revisión SQA] Hito SQA 6: verificación en ejecución y cierre de hallazgos | 10d | 2026-11-02 | 2026-11-13 |  | must start on 2026-11-02 | Gilmer Iván Ortiz Samayoa [5%] | 4h |
| 34 | 6.5 | [Documentación] Holgura para imprevistos | 10d | 2026-11-02 | 2026-11-13 |  | must start on 2026-11-02 | Gilmer Iván Ortiz Samayoa [5%] | 4h |
| 35 | 7 | **Cierre · Manuales, documentación final y exposición** | 5d | 2026-11-16 | 2026-11-20 | 29 | must start on 2026-11-16 |  | 20h |
| 36 | 7.1 | [Documentación] Manual de usuario y manual técnico | 5d | 2026-11-16 | 2026-11-20 |  | must start on 2026-11-16 | Gilmer Iván Ortiz Samayoa [20%] | 8h |
| 37 | 7.2 | [Documentación] Documentación final y presentación | 5d | 2026-11-16 | 2026-11-20 |  | must start on 2026-11-16 | Gilmer Iván Ortiz Samayoa [20%] | 8h |
| 38 | 7.3 | [Revisión SQA] Revisión final de documentos y control de versiones | 5d | 2026-11-16 | 2026-11-20 |  | must start on 2026-11-16 | Gilmer Iván Ortiz Samayoa [10%] | 4h |

Notes:
- 30: Entregable / evidencia: Sistema en línea
- 31: Entregable / evidencia: Acta de aceptación
- 32: Entregable / evidencia: Evidencia de pruebas · Avance: la regresión (46/46) y la prueba con 200 residentes (PR-01 a PR-06, 6/6) se adelantaron al 30/10/2026; falta la verificación del SQA.
- 33: Entregable / evidencia: Informe SQA final
- 34: Entregable / evidencia: —
- 36: Entregable / evidencia: Manuales
- 37: Entregable / evidencia: Entrega final
- 38: Entregable / evidencia: Acta de cierre
